# 2019

How a schedule from GanttProject changed from version to version. A marks actual dates.

## Version 1 (saved 2019-09-26)

Note of the change: PP: started 2019

| ID | Task | Duration | Start | Finish | Predecessors |
| --- | --- | --- | --- | --- | --- |
| 1 | Prototype v 0.1 | 60d | 2019-09-26 | 2019-12-18 |  |
| 2 | Marketing research | 10d | 2019-09-26 | 2019-10-09 |  |
| 3 | Accelerators research | 10d | 2019-09-26 | 2019-10-09 |  |
| 4 | Invitations | 5d | 2019-09-26 | 2019-10-02 |  |
| 5 | Visa processing | 60d | 2019-10-03 | 2019-12-25 | 4 |
| 6 | Business trip plan | 2d | 2019-10-10 | 2019-10-11 | 2, 3 |

## Version 2 (saved 2019-09-26)

Note of the change: PP: completed 2019

Last finish 2019-12-25 → 2020-02-10 (+47d).

Added:

| ID | Task | Duration | Start | Finish | Predecessors |
| --- | --- | --- | --- | --- | --- |
| 2 | **Left leg** | 76d | 2019-09-23 | 2020-01-09 |  |
| 3 | Insole controller | 10d | 2019-09-23 | 2019-10-04 |  |
| 4 | Hip controller | 10d | 2019-10-07 | 2019-10-18 | 3 |
| 5 | **Foot prosthesis** | 20d | 2019-09-23 | 2019-10-18 |  |
| 6 | Redesign for human pattern 1 | 5d | 2019-09-23 | 2019-09-27 |  |
| 7 | Implementation for humans | 5d | 2019-09-30 | 2019-10-04 | 6 |
| 8 | Redesign 2nd | 5d | 2019-10-07 | 2019-10-11 | 7 |
| 9 | Reimplementation | 5d | 2019-10-14 | 2019-10-18 | 8 |
| 10 | **Hip prosthesis** | 10d | 2019-10-14 | 2019-10-25 |  |
| 11 | Design | 5d | 2019-10-14 | 2019-10-18 | 8 |
| 12 | Implementation | 5d | 2019-10-21 | 2019-10-25 | 9, 11 |
| 13 | **Foot stimulator** | 20d | 2019-09-23 | 2019-10-18 |  |
| 14 | Design | 10d | 2019-09-23 | 2019-10-04 |  |
| 15 | Implementation | 10d | 2019-10-07 | 2019-10-18 | 14 |
| 16 | Hip stimulator | 10d | 2019-10-28 | 2019-11-11 | 10, 13 |
| 17 | Integration | 10d | 2019-11-12 | 2019-11-25 | 16 |
| 18 | **Validation** | 30d | 2019-11-27 | 2020-01-09 | 17 |
| 19 | 1st iteration | 5d | 2019-11-27 | 2019-12-03 |  |
| 20 | prosthesis tuning | 10d | 2019-12-04 | 2019-12-17 | 19 |
| 21 | 2nd iteration | 5d | 2019-12-18 | 2019-12-24 | 20 |
| 22 | prosthesis | 5d | 2019-12-25 | 2019-12-31 | 21 |
| 23 | 3rd iteration | 5d | 2020-01-02 | 2020-01-09 | 22 |
| 24 | **Right leg** | 22d | 2020-01-10 | 2020-02-10 | 2 |
| 25 | Balancer Design | 2d | 2020-01-10 | 2020-01-13 |  |
| 26 | Implementation | 5d | 2020-01-14 | 2020-01-20 | 25 |
| 27 | Validation | 15d | 2020-01-21 | 2020-02-10 | 26 |

Changed:

| ID | Task | Finish |
| --- | --- | --- |
| 1 | Prototype v 0.1 | 2019-12-18 → 2019-12-19 (+1d) |
| 31 | Visa processing | 2019-12-25 → 2019-12-26 (+1d) |

## Version 3 (saved 2019-09-26)

Note of the change: PP: completed 2019

Last finish stays 2020-02-10.

Changed:

| ID | Task | Start | Finish | Duration | Predecessors |
| --- | --- | --- | --- | --- | --- |
| 1 | **Prototype v 0.1** | 2019-09-26 → 2019-09-23 (-3d) | 2019-12-19 → 2020-02-10 (+53d) | 60d → 98d |  |
| 29 | Accelerators research | 2019-09-26 → 2019-10-10 (+14d) | 2019-10-09 → 2019-10-23 (+14d) |  | none → 28 |
| 32 | Business trip plan | 2019-10-10 → 2020-01-14 (+96d) | 2019-10-11 → 2020-01-15 (+96d) |  | 28, 29 → 18, 25, 28, 29 |

## Version 4 (saved 2019-09-26)

Note of the change: PP: corrected 2019

Last finish 2020-02-10 → 2020-02-18 (+8d).

Changed:

| ID | Task | Start | Finish |
| --- | --- | --- | --- |
| 1 | **Prototype v 0.1** | 2019-09-23 → 2019-10-01 (+8d) | 2020-02-10 → 2020-02-18 (+8d) |
| 2 | **Left leg** | 2019-09-23 → 2019-10-01 (+8d) | 2020-01-09 → 2020-01-17 (+8d) |
| 3 | Insole controller | 2019-09-23 → 2019-10-01 (+8d) | 2019-10-04 → 2019-10-14 (+10d) |
| 4 | Hip controller | 2019-10-07 → 2019-10-15 (+8d) | 2019-10-18 → 2019-10-28 (+10d) |
| 5 | **Foot prosthesis** | 2019-09-23 → 2019-10-01 (+8d) | 2019-10-18 → 2019-10-28 (+10d) |
| 6 | Redesign for human pattern 1 | 2019-09-23 → 2019-10-01 (+8d) | 2019-09-27 → 2019-10-07 (+10d) |
| 7 | Implementation for humans | 2019-09-30 → 2019-10-08 (+8d) | 2019-10-04 → 2019-10-14 (+10d) |
| 8 | Redesign 2nd | 2019-10-07 → 2019-10-15 (+8d) | 2019-10-11 → 2019-10-21 (+10d) |
| 9 | Reimplementation | 2019-10-14 → 2019-10-22 (+8d) | 2019-10-18 → 2019-10-28 (+10d) |
| 10 | **Hip prosthesis** | 2019-10-14 → 2019-10-22 (+8d) | 2019-10-25 → 2019-11-05 (+11d) |
| 11 | Design | 2019-10-14 → 2019-10-22 (+8d) | 2019-10-18 → 2019-10-28 (+10d) |
| 12 | Implementation | 2019-10-21 → 2019-10-29 (+8d) | 2019-10-25 → 2019-11-05 (+11d) |
| 13 | **Foot stimulator** | 2019-09-23 → 2019-10-01 (+8d) | 2019-10-18 → 2019-10-28 (+10d) |
| 14 | Design | 2019-09-23 → 2019-10-01 (+8d) | 2019-10-04 → 2019-10-14 (+10d) |
| 15 | Implementation | 2019-10-07 → 2019-10-15 (+8d) | 2019-10-18 → 2019-10-28 (+10d) |
| 16 | Hip stimulator | 2019-10-28 → 2019-11-06 (+9d) | 2019-11-11 → 2019-11-19 (+8d) |
| 17 | Integration | 2019-11-12 → 2019-11-20 (+8d) | 2019-11-25 → 2019-12-03 (+8d) |
| 18 | **Validation** | 2019-11-27 → 2019-12-05 (+8d) | 2020-01-09 → 2020-01-17 (+8d) |
| 19 | 1st iteration | 2019-11-27 → 2019-12-05 (+8d) | 2019-12-03 → 2019-12-11 (+8d) |
| 20 | prosthesis tuning | 2019-12-04 → 2019-12-12 (+8d) | 2019-12-17 → 2019-12-25 (+8d) |
| 21 | 2nd iteration | 2019-12-18 → 2019-12-26 (+8d) | 2019-12-24 → 2020-01-02 (+9d) |
| 22 | prosthesis | 2019-12-25 → 2020-01-03 (+9d) | 2019-12-31 → 2020-01-10 (+10d) |
| 23 | 3rd iteration | 2020-01-02 → 2020-01-13 (+11d) | 2020-01-09 → 2020-01-17 (+8d) |
| 24 | **Right leg** | 2020-01-10 → 2020-01-20 (+10d) | 2020-02-10 → 2020-02-18 (+8d) |
| 25 | Balancer Design | 2020-01-10 → 2020-01-20 (+10d) | 2020-01-13 → 2020-01-21 (+8d) |
| 26 | Implementation | 2020-01-14 → 2020-01-22 (+8d) | 2020-01-20 → 2020-01-28 (+8d) |
| 27 | Validation | 2020-01-21 → 2020-01-29 (+8d) | 2020-02-10 → 2020-02-18 (+8d) |
| 28 | Marketing research | 2019-09-26 → 2019-10-04 (+8d) | 2019-10-09 → 2019-10-17 (+8d) |
| 29 | Accelerators research | 2019-10-10 → 2019-10-18 (+8d) | 2019-10-23 → 2019-10-31 (+8d) |
| 30 | Invitations | 2019-09-26 → 2019-10-04 (+8d) | 2019-10-02 → 2019-10-10 (+8d) |
| 31 | Visa processing | 2019-10-03 → 2019-10-11 (+8d) | 2019-12-26 → 2020-01-06 (+11d) |
| 32 | Business trip plan | 2020-01-14 → 2020-01-22 (+8d) | 2020-01-15 → 2020-01-23 (+8d) |
